# Gantt_ProjetDiscret

How a schedule from MS Project changed from version to version. A marks actual dates.

## Version 1 (data date 2015-11-17, saved 2015-11-24)

Note of the change: Création du dossier projet

| ID | WBS | Task | Duration | Start | Finish | Predecessors | Complete | Total float | Constraint |
| --- | --- | --- | --- | --- | --- | --- | --- | --- | --- |
| 1 |  | Jalon début | 0d | 2015-10-19 A | 2015-10-19 A |  | 100% |  |  |
| 2 |  | Rédaction cahier des charges | 10d | 2015-10-19 A | 2015-10-30 A | 1 | 100% |  |  |
| 3 |  | Jalon début développement | 0d | 2015-10-30 A | 2015-10-30 A | 2 | 100% |  |  |
| 4 |  | 1. Documentation, aide utilisateur, tests | 34d | 2015-11-16 A | 2016-03-02 | 3 | 3% | 9d | finish no earlier than 2016-03-02 |
| 5 | 5 | **2. Conception** | 8d | 2015-11-16 A | 2015-12-16 | 3 | 50% | 1d |  |
| 6 |  | 3. Etude du code | 2d | 2015-11-16 A | 2015-11-17 A | 3 | 100% |  |  |
| 7 |  | 4. Conception de l'architecture | 4d | 2015-11-18 A | 2015-12-14 | 6 | 50% | 1d |  |
| 8 |  | 5. Refatoring | 2d | 2015-12-15 | 2015-12-16 | 7 |  | 1d |  |
| 9 |  | Jalon Fin conception | 0d | 2015-12-16 | 2015-12-16 | 8, 5 |  | 1d |  |
| 10 | 7 | **6. Réalisation noyau minimal fonctionnel** | 6d | 2015-12-17 | 2015-12-24 | 9 |  | 1d |  |
| 11 |  | 7. Transcription de l'algorithme | 1d | 2015-12-17 | 2015-12-17 | 9 |  | 1d |  |
| 12 |  | 8.Rendu 3D | 5d | 2015-12-18 | 2015-12-24 | 11 |  | 1d |  |
| 13 |  | 9. Implémentation des classes | 5d | 2015-12-17 | 2015-12-23 | 9 |  | 2d | finish no earlier than 2015-12-21 |
| 14 | 8 | **10. Interface minimale** | 4.8d | 2015-12-17 | 2015-12-23 | 9 |  | 2.2d |  |
| 15 |  | 11. Développement espace 3D | 1.8d | 2015-12-17 | 2015-12-18 | 9 |  | 2.2d |  |
| 16 |  | 12. Développement espace 2D | 2d | 2015-12-18 | 2015-12-22 | 15 |  | 2.2d |  |
| 17 |  | 13. Menus (non liés) | 1d | 2015-12-22 | 2015-12-23 | 16 |  | 2.2d |  |
| 18 |  | Jalon Noyau fonctionnel minimal | 0d | 2015-12-24 | 2015-12-24 | 17, 12, 13, 10, 14 |  | 1d |  |
| 19 | 10 | **14. Amélioration IHM** | 3d | 2016-01-18 | 2016-01-20 | 18 |  | 1d |  |
| 20 |  | 15. Choix des courbes | 1d | 2016-01-18 | 2016-01-18 | 18 |  | 1d |  |
| 21 |  | 16. Prise en compte des demandes | 2d | 2016-01-19 | 2016-01-20 | 20 |  | 1d |  |
| 22 | 11 | **17. Ajout fonctionnalités** | 3d | 2016-01-18 | 2016-01-20 | 18 |  | 1d |  |
| 23 |  | 18. Ajout de méridiennes | 1.5d | 2016-01-18 | 2016-01-19 | 18 |  | 1d |  |
| 24 |  | 19. Ajout de courbes de révolution | 1.5d | 2016-01-19 | 2016-01-20 | 23 |  | 1d |  |
| 25 |  | 20. Plans et Coupes | 1d | 2016-01-18 | 2016-01-18 | 18 |  | 2d |  |
| 26 |  | 21. Caméra | 1d | 2016-01-19 | 2016-01-19 | 25 |  | 2d |  |
| 27 |  | Jalon Application minimale | 0d | 2016-01-20 | 2016-01-20 | 19, 22, 26, 21, 24 |  | 1d |  |
| 28 | 13 | **22. Amélioration IHM** | 6d | 2016-01-21 | 2016-01-28 | 27 |  | 1d |  |
| 29 |  | 23. Prise en compte des demandes | 2d | 2016-01-21 | 2016-01-22 | 27 |  | 1d |  |
| 30 |  | 24. Paramètres simples | 4d | 2016-01-25 | 2016-01-28 | 29 |  | 1d |  |
| 31 | 14 | **25. Dessin à main levée méridienne** | 4d | 2016-01-21 | 2016-01-26 | 27 |  | 3d |  |
| 32 |  | 26. Implémentation algorithme main levée | 1d | 2016-01-21 | 2016-01-21 | 27 |  | 3d |  |
| 33 |  | 27. Implantation dessin 2D | 2d | 2016-01-22 | 2016-01-25 | 32 |  | 3d |  |
| 34 |  | 28. Lien Dessin/Algorithme | 1d | 2016-01-26 | 2016-01-26 | 33 |  | 3d |  |
| 35 |  | Jalon Dessin main levée | 0d | 2016-01-28 | 2016-01-28 | 28, 31, 30, 34 |  | 1d |  |
| 36 | 16 | **29. Gestions de données** | 4d | 2016-01-29 | 2016-02-17 | 35 |  | 3d |  |
| 37 |  | 30. Export de l'espace 3D | 3d | 2016-01-29 | 2016-02-16 | 35 |  | 3d |  |
| 38 |  | 31. Sauvegarde/Chargement des courbes | 1d | 2016-02-17 | 2016-02-17 | 37 |  | 3d |  |
| 39 | 17 | **32. Amélioration de l'IHM** | 6d | 2016-01-29 | 2016-02-19 | 35 |  | 1d |  |
| 40 |  | 33. Prise en compte des demandes | 1d | 2016-01-29 | 2016-01-29 | 35 |  | 1d |  |
| 41 |  | 34. Paramètres avancés | 4d | 2016-02-15 | 2016-02-18 | 40 |  | 2d |  |
| 42 |  | 35. Rentrer des formules | 5d | 2016-02-15 | 2016-02-19 | 40 |  | 1d |  |
| 43 |  | Jalon Ajout de formules | 0d | 2016-02-19 | 2016-02-19 | 42, 36, 39, 38, 41 |  | 1d |  |
| 44 |  | 36. Ajout des courbes par l'utilisateur | 4d | 2016-02-23 | 2016-03-02 | 43 |  | 0d | finish no earlier than 2016-03-02 |
| 45 |  | Jalon fin développement | 0d | 2016-03-02 | 2016-03-02 | 44 |  | 0d |  |
| 46 |  | 37. Rédaction rapport technique et finalisation documentation | 9d | 2016-03-07 | 2016-03-17 | 45 |  | 0d |  |
| 47 |  | Jalon fin projet | 0d | 2016-03-17 | 2016-03-17 | 46, 4 |  | 0d |  |

## Version 2 (data date 2015-11-17, saved 2015-12-02)

Note of the change: Mise à jour du diagramme de suivi Récupération du diagramme de Gantt de référence

Last finish stays 2016-03-17.

Changed:

| ID | Task | Complete |
| --- | --- | --- |
| 4 | 1. Documentation, aide utilisateur, tests | 3% → 13% |

## Version 3 (data date 2015-11-17, saved 2015-12-03)

Note of the change: Mise à jour des noms de tâches

Last finish stays 2016-03-17.

Changed:

| ID | Task | Other |
| --- | --- | --- |
| 1 | A. Jalon début | was named Jalon début |
| 2 | 0. Rédaction cahier des charges | was named Rédaction cahier des charges |
| 3 | B. Jalon début développement | was named Jalon début développement |
| 6 | 2.1 Etude du code | was named 3. Etude du code |
| 7 | 2.2 Conception de l'architecture | was named 4. Conception de l'architecture |
| 8 | 2.3 Refatoring | was named 5. Refatoring |
| 9 | C. Jalon Fin conception | was named Jalon Fin conception |
| 10 | **3. Réalisation noyau minimal fonctionnel** | was named 6. Réalisation noyau minimal fonctionnel |
| 11 | 3.1 Transcription de l'algorithme | was named 7. Transcription de l'algorithme |
| 12 | 3.2 Rendu 3D | was named 8.Rendu 3D |
| 13 | 3.3 Implémentation des classes | was named 9. Implémentation des classes |
| 14 | **4. Interface minimale** | was named 10. Interface minimale |
| 15 | 4.1 Développement espace 3D | was named 11. Développement espace 3D |
| 16 | 4.2 Développement espace 2D | was named 12. Développement espace 2D |
| 17 | 4.3 Menus (non liés) | was named 13. Menus (non liés) |
| 18 | D. Jalon Noyau fonctionnel minimal | was named Jalon Noyau fonctionnel minimal |
| 19 | **5. Amélioration IHM Choix des courbes** | was named 14. Amélioration IHM |
| 20 | 5.1 Choix des courbes | was named 15. Choix des courbes |
| 21 | 5.2 Prise en compte des demandes | was named 16. Prise en compte des demandes |
| 22 | **6. Ajout fonctionnalités** | was named 17. Ajout fonctionnalités |
| 23 | 6.1 Ajout de méridiennes | was named 18. Ajout de méridiennes |
| 24 | 6.2 Ajout de courbes de révolution | was named 19. Ajout de courbes de révolution |
| 25 | 6.3 Plans et Coupes | was named 20. Plans et Coupes |
| 26 | 6.4 Caméra | was named 21. Caméra |
| 27 | E. Jalon Application minimale | was named Jalon Application minimale |
| 28 | **7. Amélioration IHM Paramètres** | was named 22. Amélioration IHM |
| 29 | 7.1 Prise en compte des demandes | was named 23. Prise en compte des demandes |
| 30 | 7.2 Paramètres simples | was named 24. Paramètres simples |
| 31 | **8. Dessin à main levée méridienne** | was named 25. Dessin à main levée méridienne |
| 32 | 8.1 Implémentation algorithme main levée | was named 26. Implémentation algorithme main levée |
| 33 | 8.2 Implantation dessin 2D | was named 27. Implantation dessin 2D |
| 34 | 8.3 Lien Dessin/Algorithme | was named 28. Lien Dessin/Algorithme |
| 35 | F. Jalon Dessin main levée | was named Jalon Dessin main levée |
| 36 | **9. Gestions de données** | was named 29. Gestions de données |
| 37 | 9.1 Export de l'espace 3D | was named 30. Export de l'espace 3D |
| 38 | 9.2 Sauvegarde/Chargement des courbes | was named 31. Sauvegarde/Chargement des courbes |
| 39 | **10. Amélioration de l'IHM Rentrer des formules** | was named 32. Amélioration de l'IHM |
| 40 | 10.1 Prise en compte des demandes | was named 33. Prise en compte des demandes |
| 41 | 10.2 Paramètres avancés | was named 34. Paramètres avancés |
| 42 | 10.3 Rentrer des formules | was named 35. Rentrer des formules |
| 43 | G. Jalon Ajout de formules | was named Jalon Ajout de formules |
| 44 | 11. Ajout des courbes par l'utilisateur | was named 36. Ajout des courbes par l'utilisateur |
| 45 | H. Jalon fin développement | was named Jalon fin développement |
| 46 | 12. Rédaction rapport technique et finalisation documentation | was named 37. Rédaction rapport technique et finalisation documentation |
| 47 | I. Jalon fin projet | was named Jalon fin projet |
