# Gantt_ProjetDiscret2

How a schedule from MS Project changed from version to version. A marks actual dates.

## Version 1 (data date 2016-02-26, saved 2016-02-26)

Note of the change: Merge branch 'master' of https://github.com/SnoopydesBois/ProjetDiscret

| ID | WBS | Task | Duration | Start | Finish | Predecessors | Complete | Total float | Constraint |
| --- | --- | --- | --- | --- | --- | --- | --- | --- | --- |
| 1 |  | A. Jalon début | 0d | 2015-10-19 A | 2015-10-19 A |  | 100% |  |  |
| 2 |  | 0. Rédaction cahier des charges | 10d | 2015-10-19 A | 2015-10-30 A | 1 | 100% |  |  |
| 3 |  | B. Jalon début développement | 0d | 2015-10-30 A | 2015-10-30 A | 2 | 100% |  |  |
| 4 |  | 1. Documentation, aide utilisateur, tests | 34d | 2015-11-16 A | 2016-03-02 | 3 | 50% | 10d | finish no earlier than 2016-03-02 |
| 5 | 5 | **2. Conception** | 10d | 2015-11-16 A | 2015-12-18 A | 3 | 100% |  |  |
| 6 |  | 2.1 Etude du code | 1d | 2015-11-16 A | 2015-11-16 A | 3 | 100% |  |  |
| 7 |  | 2.2 Conception de l'architecture | 8d | 2015-11-17 A | 2015-12-17 A | 6 | 100% |  | finish no earlier than 2015-12-17 |
| 8 |  | 2.3 Refactoring | 2d | 2015-12-17 A | 2015-12-18 A | 7 | 100% |  |  |
| 9 |  | C. Jalon Fin conception | 0d | 2015-12-18 A | 2015-12-18 A | 8, 5 | 100% |  |  |
| 10 | 7 | **3. Réalisation noyau minimal fonctionnel** | 7d | 2015-12-17 A | 2016-01-18 A | 9 | 100% |  |  |
| 11 |  | 3.1 Transcription de l'algorithme | 4d | 2015-12-22 A | 2016-01-18 A | 9 | 100% |  |  |
| 12 |  | 3.2 Rendu 3D | 4d | 2015-12-22 A | 2016-01-18 A | 11 | 100% |  |  |
| 13 |  | 3.3 Implémentation des classes | 7d | 2015-12-17 A | 2016-01-18 A | 9 | 100% |  |  |
| 14 | 8 | **4. Interface minimale** | 7d | 2015-12-17 A | 2016-01-18 A | 9 | 100% |  |  |
| 15 |  | 4.1 Développement espace 3D | 2d | 2015-12-17 A | 2015-12-18 A | 9 | 100% |  |  |
| 16 |  | 4.2 Développement espace 2D | 2d | 2015-12-21 A | 2015-12-22 A | 15 | 100% |  |  |
| 17 |  | 4.3 Menus (non liés) | 1d | 2016-01-18 A | 2016-01-18 A | 16 | 100% |  |  |
| 18 |  | D. Jalon Noyau fonctionnel minimal | 0d | 2016-01-18 A | 2016-01-18 A | 17, 12, 13, 10, 14 | 100% |  | finish no earlier than 2016-01-10 |
| 19 | 10 | **5. Amélioration IHM Choix des courbes** | 6d | 2016-01-19 A | 2016-01-26 A | 18 | 100% |  |  |
| 20 |  | 5.1 Choix des courbes | 3d | 2016-01-22 A | 2016-01-26 A | 18 | 100% |  | finish no earlier than 2016-01-25 |
| 21 |  | 5.2 Prise en compte des demandes | 2d | 2016-01-19 A | 2016-01-20 A | 20 | 100% |  |  |
| 22 | 11 | **6. Ajout fonctionnalités** | 8d | 2016-01-18 A | 2016-01-27 A | 18 | 100% |  |  |
| 23 |  | 6.1 Implémentation des classes Courbe | 3d | 2016-01-18 A | 2016-01-20 A | 18 | 100% |  |  |
| 24 |  | 6.2 Ajout de méridiennes | 0.5d | 2016-01-21 A | 2016-01-21 A | 18 | 100% |  |  |
| 25 |  | 6.3 Ajout de courbes de révolution | 0.5d | 2016-01-21 A | 2016-01-21 A | 24 | 100% |  |  |
| 26 |  | 6.4 Plans et Coupes | 1d | 2016-01-27 A | 2016-01-27 A | 18 | 100% |  |  |
| 27 |  | 6.5 Caméra | 1d | 2016-01-20 A | 2016-01-20 A | 18 | 100% |  |  |
| 28 |  | E. Jalon Application minimale | 0d | 2016-01-27 A | 2016-01-27 A | 19, 22, 27, 21, 25, 26, 23 | 100% |  |  |
| 29 | 13 | **7. Amélioration IHM Paramètres** | 5d | 2016-01-25 A | 2016-01-29 A | 28 | 100% |  |  |
| 30 |  | 7.1 Prise en compte des demandes | 2d | 2016-01-28 A | 2016-01-29 A | 28 | 100% |  |  |
| 31 |  | 7.2 Paramètres simples | 2d | 2016-01-25 A | 2016-01-26 A | 30 | 100% |  |  |
| 32 | 14 | **8. Dessin à main levée méridienne** | 5d | 2016-02-16 A | 2016-02-22 A | 28 | 100% |  |  |
| 33 |  | 8.1 Implémentation des classes Dessin main levée | 2d | 2016-02-16 A | 2016-02-17 A | 28 | 100% |  |  |
| 34 |  | 8.2 Implémentation algorithme main levée | 2d | 2016-02-16 A | 2016-02-17 A | 28 | 100% |  | finish no earlier than 2016-02-17 |
| 35 |  | 8.3 Implantation dessin 2D | 2d | 2016-02-18 A | 2016-02-19 A | 34, 33 | 100% |  | start no earlier than 2016-02-17 |
| 36 |  | 8.4 Lien Dessin/Algorithme | 1d | 2016-02-22 A | 2016-02-22 A | 35 | 100% |  |  |
| 37 |  | F. Jalon Dessin main levée | 0d | 2016-02-22 A | 2016-02-22 A | 29, 32, 31, 36 | 100% |  |  |
| 38 | 16 | **9. Gestions de données** | 8d | 2016-02-15 A | 2016-02-24 A | 28 | 100% |  |  |
| 39 |  | 9.1 Implémentation des classes Gestion de données | 1d | 2016-02-15 A | 2016-02-16 A | 28 | 100% |  |  |
| 40 |  | 9.2 Export de l'espace 3D | 3d | 2016-02-17 A | 2016-02-19 A | 28 | 100% |  | finish no earlier than 2016-02-19 |
| 41 |  | 9.3 Sauvegarde/Chargement des courbes | 3d | 2016-02-22 A | 2016-02-24 A | 37 | 100% |  | finish no earlier than 2016-02-24 |
| 42 | 17 | **10. Amélioration de l'IHM Rentrer des formules** | 4d | 2016-02-23 A | 2016-02-26 A | 28 | 100% |  |  |
| 43 |  | 10.1 Prise en compte des demandes | 1d | 2016-02-23 A | 2016-02-23 A | 28 | 100% |  |  |
| 44 |  | 10.2 Paramètres avancés | 1d | 2016-02-23 A | 2016-02-23 A | 28 | 100% |  |  |
| 45 |  | 10.3 Rentrer des formules | 2d | 2016-02-23 A | 2016-02-26 A | 28 | 100% |  | finish no earlier than 2016-02-26 |
| 46 |  | G. Jalon Ajout de formules | 0d | 2016-02-26 A | 2016-02-26 A | 45, 38, 42, 41, 39 | 100% |  | start no earlier than 2016-02-26 |
| 47 |  | 11. Ajout des courbes par l'utilisateur | 1d | 2016-03-07 | 2016-03-07 | 46 |  | 0d | finish no earlier than 2016-03-02 |
| 48 |  | H. Jalon fin développement | 0d | 2016-03-07 | 2016-03-07 | 47 |  | 0d |  |
| 49 |  | 12. Rédaction rapport technique et finalisation documentation | 9d | 2016-03-08 | 2016-03-18 | 48 |  | 0d |  |
| 50 |  | I. Jalon fin projet | 0d | 2016-03-18 | 2016-03-18 | 49, 4 |  | 0d |  |

## Version 2 (data date 2016-03-21, saved 2016-03-15)

Note of the change: Merge branch 'master' of https://github.com/SnoopydesBois/ProjetDiscret

Last finish stays 2016-03-18. Complete tasks 36 → 41.

Changed:

| ID | Task | Start | Finish | Complete | Total float | Predecessors |
| --- | --- | --- | --- | --- | --- | --- |
| 4 | 1. Documentation, aide utilisateur, tests |  | 2016-03-02 A | 50% → 100% | 10d → none |  |
| 47 | 11. Ajout des courbes par l'utilisateur | 2016-03-07 → 2016-02-26 A (-10d) | 2016-03-07 → 2016-03-02 A (-5d) | 0% → 100% | 0d → none | 46 → none |
| 48 | H. Jalon fin développement | 2016-03-07 A | 2016-03-07 A | 0% → 100% | 0d → none | 47 → 46 |
| 49 | 12. Rédaction rapport technique et finalisation documentation | 2016-03-08 A | 2016-03-18 A | 0% → 100% | 0d → none |  |
| 50 | I. Jalon fin projet | 2016-03-18 A | 2016-03-18 A | 0% → 100% | 0d → none |  |
